How a schedule from MS Project changed from version to version. A marks actual dates.

## Version 1 (saved 2018-07-04)

Note of the change: 对配置库进行架构整理

| ID | WBS | Task | Duration | Start | Finish | Predecessors |
| --- | --- | --- | --- | --- | --- | --- |
| 1 | 1 | **精品课程开发与管理系统** | 21d | 2018-07-02 | 2018-07-30 |  |
| 2 | 1.1 | **先启阶段** | 6d | 2018-07-02 | 2018-07-07 |  |
| 3 | 1.1.1 | **项目管理** | 1d | 2018-07-02 | 2018-07-02 |  |
| 4 |  | 项目立项 | 0.5d | 2018-07-02 | 2018-07-02 |  |
| 5 |  | 制定项目计划 | 0.5d | 2018-07-02 | 2018-07-02 | 4 |
| 6 |  | 同行评审 | 1d | 2018-07-02 | 2018-07-02 |  |
| 7 | 1.1.2 | **配置管理** | 2d | 2018-07-03 | 2018-07-04 |  |
| 8 |  | 制定配置计划 | 1d | 2018-07-03 | 2018-07-03 |  |
| 9 |  | 搭建配置环境 | 1d | 2018-07-04 | 2018-07-04 | 8 |
| 10 | 1.1.3 | **需求开发** | 2d | 2018-07-05 | 2018-07-06 |  |
| 11 |  | 用例建模 | 1d | 2018-07-05 | 2018-07-05 |  |
| 12 |  | 用例阐述 | 1d | 2018-07-06 | 2018-07-06 | 11 |
| 13 | 1.1.4 | **阶段评审** | 1d | 2018-07-07 | 2018-07-07 |  |
| 14 |  | 评审需求工件 | 1d | 2018-07-07 | 2018-07-07 |  |
| 15 |  | 发布需求基线 | 1d | 2018-07-07 | 2018-07-07 |  |

## Version 2 (data date 2018-07-20, saved 2018-07-19)

Note of the change: 新增项目开发进度

Last finish 2018-07-30 → 2018-07-20 (-10d). Complete tasks 0 → 17.

Added:

| ID | Task | Duration | Start | Finish | Predecessors | Resources |
| --- | --- | --- | --- | --- | --- | --- |
| 16 | **精化阶段** | 4d | 2018-07-06 A | 2018-07-09 A |  |  |
| 17 | 设计界面原型 | 1d | 2018-07-06 A | 2018-07-06 A |  | 袁罗秀; 吴东升 |
| 18 | **OOAD** | 2d | 2018-07-06 A | 2018-07-07 |  |  |
| 19 | 分析模型 | 0.5d | 2018-07-06 A | 2018-07-06 A | 15 | 吴杰威; 许晓佳 |
| 20 | 设计模型 | 0.5d | 2018-07-06 A | 2018-07-06 A | 19 | 吴杰威; 许晓佳 |
| 21 | 数据建模与数据库设计 | 1d | 2018-07-06 A | 2018-07-06 A | 15 | 赖海威 |
| 22 | 集成测试用例设计 | 1d | 2018-07-07 A | 2018-07-07 A | 20 | 赖海威 |
| 23 | **阶段评审** | 2d | 2018-07-08 A | 2018-07-09 A |  |  |
| 24 | 精化配置状态审计 | 1d | 2018-07-08 A | 2018-07-08 A | 17, 18, 21, 22 | 吴东升 |
| 25 | 评审设计工件 | 1d | 2018-07-08 A | 2018-07-08 A | 17, 18, 21, 22 | 许晓佳; 袁罗秀 |
| 26 | 发布设计基线 | 1d | 2018-07-09 A | 2018-07-09 A | 24, 25 | 吴杰威 |
| 27 | **构建阶段** | 10d | 2018-07-10 A | 2018-07-19 |  |  |
| 28 | 单元编码 | 5d | 2018-07-10 A | 2018-07-14 |  | 赖海威 [50%]; 吴东升 [50%]; 吴杰威; 许晓佳; 袁罗秀 |
| 29 | 系统集成 | 5d | 2018-07-10 A | 2018-07-14 |  | 吴东升 [50%] |
| 30 | 集成测试 | 2d | 2018-07-15 | 2018-07-16 | 29 | 赖海威 [50%] |
| 31 | **阶段评审** | 3d | 2018-07-17 | 2018-07-19 |  |  |
| 32 | 构建配置状态审计 | 1d | 2018-07-17 | 2018-07-17 | 30 | 许晓佳; 袁罗秀 |
| 33 | 评审构建工件 | 1d | 2018-07-18 | 2018-07-18 |  | 许晓佳; 袁罗秀 |
| 34 | 发布构建基线 | 1d | 2018-07-19 | 2018-07-19 | 32, 33 | 吴杰威 |

Changed:

| ID | Task | Start | Finish | Duration | Complete | Predecessors | Other |
| --- | --- | --- | --- | --- | --- | --- | --- |
| 1 | **精品课程开发与管理系统** | 2018-07-02 → 2018-07-01 A (-1d) | 2018-07-30 → 2018-07-20 (-10d) | 21d → 20d | 0% → 69% |  | baseline start none → 2018-07-01; baseline finish none → 2018-07-20 |
| 2 | **先启阶段** | 2018-07-02 → 2018-07-01 A (-1d) | 2018-07-07 → 2018-07-05 A (-2d) | 6d → 5d | 0% → 100% |  | baseline start none → 2018-07-01; baseline finish none → 2018-07-05 |
| 3 | **项目管理** | 2018-07-02 → 2018-07-01 A (-1d) | 2018-07-02 → 2018-07-01 A (-1d) |  | 0% → 100% |  | baseline start none → 2018-07-01; baseline finish none → 2018-07-01 |
| 4 | 项目立项 | 2018-07-02 → 2018-07-01 A (-1d) | 2018-07-02 → 2018-07-01 A (-1d) |  | 0% → 100% |  | resources 吴东升 → 吴东升 [50%]; baseline start none → 2018-07-01; baseline finish none → 2018-07-01 |
| 5 | 制定项目计划 | 2018-07-02 → 2018-07-01 A (-1d) | 2018-07-02 → 2018-07-01 A (-1d) |  | 0% → 100% |  | resources 吴东升 → 吴东升 [50%]; baseline start none → 2018-07-01; baseline finish none → 2018-07-01 |
| 6 | 同行评审 | 2018-07-02 → 2018-07-01 A (-1d) | 2018-07-02 → 2018-07-01 A (-1d) |  | 0% → 100% |  | baseline start none → 2018-07-01; baseline finish none → 2018-07-01 |
| 7 | **配置管理** | 2018-07-03 → 2018-07-02 A (-1d) | 2018-07-04 → 2018-07-02 A (-2d) | 2d → 1d | 0% → 100% |  | baseline start none → 2018-07-02; baseline finish none → 2018-07-02 |
| 8 | 制定配置计划 | 2018-07-03 → 2018-07-02 A (-1d) | 2018-07-03 → 2018-07-02 A (-1d) | 1d → 0.5d | 0% → 100% |  | baseline start none → 2018-07-02; baseline finish none → 2018-07-02 |
| 9 | 搭建配置环境 | 2018-07-04 → 2018-07-02 A (-2d) | 2018-07-04 → 2018-07-02 A (-2d) | 1d → 0.5d | 0% → 100% |  | baseline start none → 2018-07-02; baseline finish none → 2018-07-02 |
| 10 | **需求开发** | 2018-07-05 → 2018-07-03 A (-2d) | 2018-07-06 → 2018-07-04 A (-2d) |  | 0% → 100% |  | baseline start none → 2018-07-03; baseline finish none → 2018-07-04 |
| 11 | 用例建模 | 2018-07-05 → 2018-07-03 A (-2d) | 2018-07-05 → 2018-07-03 A (-2d) |  | 0% → 100% |  | baseline start none → 2018-07-03; baseline finish none → 2018-07-03 |
| 12 | 用例阐述 | 2018-07-06 → 2018-07-04 A (-2d) | 2018-07-06 → 2018-07-04 A (-2d) |  | 0% → 100% |  | baseline start none → 2018-07-04; baseline finish none → 2018-07-04 |
| 13 | **阶段评审** | 2018-07-07 → 2018-07-05 A (-2d) | 2018-07-07 → 2018-07-05 A (-2d) |  | 0% → 100% |  | baseline start none → 2018-07-05; baseline finish none → 2018-07-05 |
| 14 | 评审需求工件 | 2018-07-07 → 2018-07-05 A (-2d) | 2018-07-07 → 2018-07-05 A (-2d) |  | 0% → 100% | none → 12 | resources 赖海威; 吴东升 → 吴东升; baseline start none → 2018-07-05; baseline finish none → 2018-07-05 |
| 15 | 发布需求基线 | 2018-07-07 → 2018-07-05 A (-2d) | 2018-07-07 → 2018-07-05 A (-2d) |  | 0% → 100% |  | baseline start none → 2018-07-05; baseline finish none → 2018-07-05 |
